# TrilinosRelease5

Schedule from MS Project, 2004-12-23 to 2005-09-01, scheduled back from the finish, A marks actual dates.
Sandia National Labs

## Calendars

- Standard: Mon-Fri 08:00-12:00, 13:00-17:00; Sat-Sun off. Exceptions (off unless hours are given): 2004-12-24, 2004-12-27 to 2004-12-31, 2005-01-03.

## Schedule

| ID | WBS | Task | Type | Duration | Start | Finish | Predecessors | Complete | Remaining | Total slack | Free slack | Constraint |
| --- | --- | --- | --- | --- | --- | --- | --- | --- | --- | --- | --- | --- |
| 1 | 1 | Verify which packages are to be included in the release |  | 45min | 2005-07-20 08:00 A | 2005-07-26 08:36 A |  | 100% |  |  |  | finish no later than 2005-07-28 17:00 |
| 2 | 2 | Figure out which packages need to go through the copyright process |  | 21min | 2005-07-15 08:00 A | 2005-07-18 17:00 A | 1 | 100% |  |  |  | finish no later than 2004-12-02 17:00 |
| 3 | 3 | File All release-related Bugzilla Bugs |  | 3d | 2005-07-20 08:00 | 2005-07-22 17:00 | 1 |  |  | 0d |  | must start on 2005-07-20 08:00 |
| 4 | 4 | Try to setup more alegra testing |  | 5h | 2004-12-23 11:00 | 2004-12-23 17:00 |  |  |  | 16.38d | 0d | as late as possible |
| 5 | 5 | Complete copyright process for packages that are to be released and are not copyrighted |  | 29d | 2005-07-15 08:00 A | 2005-08-24 17:00 | 2 | 11% | 25.7d | 0d |  | finish no later than 2005-08-24 17:00 |
| 6 | 6 | Do initial verification of builds on important platforms |  | 4d | 2005-08-02 08:00 | 2005-08-05 17:00 | 1 |  |  | 4.92d | 0d | finish no later than 2005-08-05 17:00 |
| 7 | 7 | **Implement Software Quality Plan requirements** |  | 3d | 2005-07-14 08:00 A | 2005-07-18 17:00 A |  | 100% |  |  |  | as late as possible |
| 8 | 7.1 | Update SQP checklists for release |  | 3d | 2005-07-14 08:00 A | 2005-07-18 17:00 A |  | 100% |  |  |  | finish no later than 2005-02-05 17:00 |
| 9 | 8 | Packages need to support make dist |  | 4d | 2005-08-04 08:00 A | 2005-08-09 17:00 | 1 | 30% | 2.8d | 0d |  | finish no later than 2005-08-11 17:00 |
| 10 | 9 | Send email about repository freeze |  | 15min | 2005-07-29 08:00 A | 2005-07-29 08:15 A |  | 100% |  |  |  | finish no later than 2005-07-29 17:00 |
| 11 | 10 | Freeze repository | milestone | 0d | 2005-08-01 08:00 A | 2005-08-01 08:00 A | 1, 6, 7SS, 8, 9, 10 | 100% |  |  |  | start no later than 2005-08-01 08:00 |
| 12 | 11 | Create 6.0 release branch |  | 2h | 2005-08-01 10:00 A | 2005-08-01 12:00 A | 11 | 100% |  |  |  | finish no later than 2005-08-01 12:00 |
| 13 | 12 | Send note to dev list including name of release branch |  | 30min | 2005-08-01 12:00 A | 2005-08-01 13:30 A | 12 | 100% |  |  |  | start no later than 2005-08-01 12:00 |
| 14 | 13 | Sierra Verification testing |  | 16d | 2005-08-03 08:00 | 2005-08-24 17:00 | 13 |  |  | 1.44d | 0d | finish no later than 2005-08-24 17:00 |
| 15 | 14 | Alegra Verification testing |  | 13d | 2005-08-09 08:00 | 2005-08-25 17:00 | 13, 14SS+1d |  |  | 4.44d | 0d | finish no later than 2005-08-25 17:00 |
| 16 | 15 | Set up the Trilinos 6.0 website |  | 7d | 2005-08-10 08:00 | 2005-08-18 17:00 | 13 |  |  | 6.44d | 0d | finish no later than 2005-08-18 17:00 |
| 17 | 16 | Set up 6.0 test harness runs |  | 4d | 2005-08-02 08:00 | 2005-08-05 17:00 | 12 |  |  | 0.5d | 0d | finish no later than 2005-08-06 12:00 |
| 18 | 17 | Send request to developers for release notes |  | 30min | 2005-08-10 08:00 | 2005-08-10 08:30 | 13 |  |  | 6.44d | 0d | start no later than 2005-08-10 08:00 |
| 19 | 18 | Add release notes to repository, tarball and web |  | 16h | 2005-08-30 08:00 | 2005-08-31 17:00 | 18FS+3d, 16 |  |  | 6.88d | 0d | start no later than 2005-08-30 08:00 |
| 20 | 19 | Send note to dev list to encourage package developers to send a note to their user lists about new release features |  | 30min | 2005-08-29 16:30 | 2005-08-29 17:00 | 14, 15 |  |  | 4.38d | 0d | finish no later than 2005-08-29 17:00 |
| 21 | 20 | Create preliminary version of distribution tarball |  | 24h | 2005-08-02 08:00 | 2005-08-04 17:00 | 12, 9 |  |  | -6.06d | 0d | finish no later than 2005-08-04 17:00 |
| 22 | 21 | Obtain permission for release from Project Leader |  | 8h | 2005-08-31 08:00 | 2005-08-31 17:00 | 21 |  |  | 11.94d | 0d | finish no later than 2005-09-01 17:00 |
| 23 | 22 | Regenerate tarball and post on 6.0 website |  | 6h | 2005-09-01 08:00 | 2005-09-01 15:00 | 14, 15, 22 |  |  | 6.44d | 0d | start no later than 2005-09-01 08:00 |
| 24 | 23 | Announce release via Trilinos-Announce list | milestone | 45min | 2005-09-01 16:15 | 2005-09-01 17:00 | 23 |  |  | 0.03d | 0d | finish no later than 2005-09-01 17:00 |

Notes:
- 1: Send a note to dev list. Include a note about copyrighting. / The version 6.0 general release will contain 19 packages: Amesos, Anasazi, AztecOO, Didasko, Epetra, EpetraExt, Ifpack, Kokkos, Komplex, LOCA, ML, New_Package, NOX, Pliris, PyTrilinos, Teuchos, Thyra, Triutils, and TSFExtended.
- 2: Contact developers as necessary / Thyra -
- 5: Most of this is now out of my hands.
- 6: Report results for non-nightly platforms after freeze
- 9: Contact packages sequentially about verifying their portion of tarball for best results. / We will create the final tarball later, but the initial verification of make dist support is complete. Only a handful of changes were necessary.
- 22: All package/framework process checklist bugs must be closed.
